@startgantt 14-poc-gantt
title Kế hoạch POC ANKT — 16/09 → 23/10/2026
printscale daily zoom 2
Project starts 2026-09-16
saturday are closed
sunday are closed

-- Tuần 0 · Chuẩn bị --
[Chốt phạm vi demo + tiêu chí] as [P0] requires 2 days
[Reboot sửa GPU driver + dọn ổ đĩa] as [P1] requires 2 days
[Tải Tier S + đăng ký nguồn (sources.yaml)] as [P2] requires 3 days

-- Sprint 1 · Dữ liệu nền (21/09–02/10) --
[Schema ankt + seed YAML chỉ số nhóm A] as [S1A] requires 4 days
[S1A] starts 2026-09-21
[Connector API/SDMX: IMF · WB · BIS] as [S1B] requires 5 days
[S1B] starts 2026-09-21
[Connector file: NSO DOCX/XLSX/XLS] as [S1C] requires 4 days
[S1C] starts at [S1A]'s end
[Docling trang/bbox + OCR baseline] as [S1D] requires 5 days
[S1D] starts 2026-09-21
[Connector XML/HTML/RSS: VCB · SBV · baochinhphu] as [S1E] requires 3 days
[S1E] starts at [S1B]'s end
[Golden set v1 + scorer dung sai] as [S1F] requires 8 days
[S1F] starts 2026-09-21

-- Sprint 2 · Agent + UI (05/10–16/10; S2A, S2B gối đầu từ cuối Sprint 1) --
[Bản tin nợ công PDF → review → observation] as [S2A] requires 5 days
[S2A] starts at [S1D]'s end
[Indicator tools + compute + ngưỡng theo kỳ] as [S2B] requires 6 days
[S2B] starts at [S1A]'s end
[Route fast path + evidence frame + verifier] as [S2C] requires 5 days
[S2C] starts at [S2B]'s end
[indicator-mcp server] as [S2D] requires 3 days
[S2D] starts at [S2B]'s end
[UI: trang chỉ số + thẻ chỉ số + trang nguồn] as [S2E] requires 8 days
[S2E] starts 2026-10-05
[KB pháp lý + Tier M (vbpl 4,37 GB)] as [S2F] requires 5 days
[S2F] starts 2026-10-05

-- Sprint 3 · Đo và báo cáo (19/10–23/10) --
[Chạy eval + sửa lỗi] as [S3A] requires 4 days
[S3A] starts 2026-10-19
[Load test k6 + ingestion throughput] as [S3B] requires 3 days
[S3B] starts 2026-10-19
[Benchmark OCR nhỏ (30 trang)] as [S3C] requires 3 days
[S3C] starts 2026-10-19
[Kịch bản demo + slide báo cáo] as [S3D] requires 2 days
[S3D] starts 2026-10-22
[Demo báo cáo] happens 2026-10-23
@endgantt
