@startgantt 06-roadmap-gantt
title Lộ trình nền tảng đa chỉ số ANKT — bắt đầu 21/09/2026
printscale weekly
Project starts 2026-09-21
saturday are closed
sunday are closed

-- GĐ0 · Golden use case Nợ công/GDP --
[Sửa GPU driver + OCR baseline] as [G0A] requires 3 days
[Source registry + trang/bbox trong KB] as [G0B] requires 8 days
[Eval case v2 + scorer dung sai + Langfuse Datasets] as [G0C] requires 6 days
[Indicator registry + observation/vintage store] as [G0D] requires 10 days
[Computation engine: ratio · căn kỳ · ngưỡng theo kỳ] as [G0E] requires 6 days
[G0E] starts at [G0D]'s end
[Indicator resolver tool + numeric verifier] as [G0F] requires 6 days
[G0F] starts at [G0E]'s end
[Golden set v1 (ECO-008) + chạy gate] as [G0G] requires 5 days
[G0G] starts at [G0E]'s end
[Demo 1: L1–L3 Nợ công/GDP] happens at [G0F]'s end

-- GĐ1 · 6 chỉ tiêu an toàn nợ (nhóm A) --
[Connector: bản tin PDF · NSO · SBV] as [G1A] requires 15 days
[G1A] starts at [G0B]'s end
[Connector API World Bank/IMF + CronJob] as [G1B] requires 6 days
[G1B] starts at [G0B]'s end
[Benchmark OCR/VLM/embedding → chọn model] as [G1F] requires 10 days
[G1F] starts at [G0A]'s end
[Workbench duyệt trích xuất] as [G1C] requires 8 days
[G1C] starts at [G1A]'s start
[Reconciliation + DQ rules] as [G1D] requires 6 days
[G1D] starts at [G0E]'s end
[Trang chỉ số + biểu đồ ngưỡng + trích dẫn trang] as [G1E] requires 8 days
[G1E] starts at [G0F]'s end
[Mở rộng đủ 6 chỉ tiêu nhóm A] as [G1G] requires 10 days
[G1G] starts at [G1E]'s end
[Demo 2: nhóm A đầy đủ] happens at [G1G]'s end

-- GĐ2 · Đa chỉ số domain 2–3 (~30 chỉ số) --
[Registry editor + quy trình duyệt] as [G2A] requires 20 days
[G2A] starts at [G1G]'s end
[Alert engine + hộp cảnh báo] as [G2B] requires 10 days
[G2B] starts at [G1G]'s end
[RBAC theo phân loại + audit] as [G2D] requires 10 days
[G2D] starts at [G1G]'s end
[Dashboard ANKT + báo cáo PDF/DOCX] as [G2C] requires 20 days
[G2C] starts at [G2B]'s end
[Golden set ≥300 case + benchmark định kỳ] as [G2E] requires 20 days
[G2E] starts at [G2A]'s start
[Demo 3: ~30 chỉ số + cảnh báo] happens at [G2C]'s end

-- GĐ3 · Dự phóng & cảnh báo sớm --
[DSA / stress test (nhóm G)] as [G3A] requires 20 days
[G3A] starts at [G2C]'s end
[Dự báo · EWS · kịch bản what-if] as [G3B] requires 25 days
[G3B] starts at [G3A]'s end
@endgantt
